# MXXXXXX - Automation Project

Schedule from MS Project, 2024-06-24 to 2025-03-05.

## Calendars

- Standard: Mon-Fri 08:00-12:00, 13:00-17:00; Sat-Sun off.

## Schedule

| ID | WBS | Task | Duration | Start | Finish | Predecessors | Total slack | Free slack |
| --- | --- | --- | --- | --- | --- | --- | --- | --- |
| 1 | 1 | Project Kickoff | 1d | 2024-06-24 | 2024-06-24 |  | 0d |  |
| 2 | 2 | **Site Survey / Site Dicovery** | 3d | 2024-06-25 | 2024-06-27 | 1 | 0d |  |
| 3 | 2.1 | **Off Site** | 1d | 2024-06-25 | 2024-06-25 |  | 0d |  |
| 4 | 2.1.1 | Hardware Requirement | 1d | 2024-06-25 | 2024-06-25 |  | 0d |  |
| 5 | 2.1.2 | Software Requirement | 1d | 2024-06-25 | 2024-06-25 |  | 0d |  |
| 6 | 2.2 | **Site Visit** | 2d | 2024-06-26 | 2024-06-27 | 3 | 0d |  |
| 7 | 2.2.1 | Hardware Requirement | 1d | 2024-06-26 | 2024-06-26 |  | 1d |  |
| 8 | 2.2.2 | Software Requirement | 2d | 2024-06-26 | 2024-06-27 |  | 0d |  |
| 9 | 3 | **Project Documentation** | 55d | 2024-06-28 | 2024-09-12 | 2 | 0d |  |
| 10 | 3.1 | **Process and Mechanical (P&M) Design** | 25d | 2024-06-28 | 2024-08-01 |  | 0d |  |
| 11 | 3.1.1 | Process Flow Diagram (PFD) | 5d | 2024-06-28 | 2024-07-04 |  | 0d |  |
| 12 | 3.1.2 | Process and Instrumentation Diagram (P&ID) | 10d | 2024-07-05 | 2024-07-18 | 11 | 0d |  |
| 13 | 3.1.3 | Instrument Index | 5d | 2024-07-19 | 2024-07-25 | 12 | 0d |  |
| 14 | 3.1.4 | Review, Ammend and Approval | 5d | 2024-07-26 | 2024-08-01 | 12, 13 | 0d |  |
| 15 | 3.2 | **Automation and Control (A&C) Design** | 20d | 2024-08-02 | 2024-08-29 | 10 | 0d |  |
| 16 | 3.2.1 | **Hardware Specifications** | 7d | 2024-08-02 | 2024-08-12 |  | 8d |  |
| 17 | 3.2.1.1 | Device List | 2d | 2024-08-02 | 2024-08-05 |  | 8d | 0d |
| 18 | 3.2.1.2 | IO List | 3d | 2024-08-06 | 2024-08-08 | 17 | 8d | 0d |
| 19 | 3.2.1.3 | Network Device Layout / Topology | 5d | 2024-08-02 | 2024-08-08 |  | 8d | 0d |
| 20 | 3.2.1.4 | Controller and Device Specification | 2d | 2024-08-09 | 2024-08-12 | 18, 19 | 8d |  |
| 21 | 3.2.2 | **Software Specifications** | 15d | 2024-08-02 | 2024-08-22 |  | 0d |  |
| 22 | 3.2.2.1 | Control Functional Specification | 14d | 2024-08-02 | 2024-08-21 |  | 0d |  |
| 23 | 3.2.2.2 | Network Connection List | 5d | 2024-08-02 | 2024-08-08 |  | 10d |  |
| 24 | 3.2.2.3 | Alarms Register | 3d | 2024-08-02 | 2024-08-06 |  | 12d |  |
| 25 | 3.2.2.4 | Communication Register | 3d | 2024-08-02 | 2024-08-06 |  | 12d |  |
| 26 | 3.2.2.5 | SAT Procedure | 1d | 2024-08-22 | 2024-08-22 | 22 | 0d |  |
| 27 | 3.2.3 | Review, Ammend and Approval | 5d | 2024-08-23 | 2024-08-29 | 16, 21 | 0d |  |

| ID | WBS | Task | Type | Duration | Start | Finish | Predecessors | Total slack | Free slack |
| --- | --- | --- | --- | --- | --- | --- | --- | --- | --- |
| 28 | 3.3 | **Electrical Deisgn** |  | 10d | 2024-08-30 | 2024-09-12 | 15 | 0d |  |
| 29 | 3.3.1 | Single Line Diagram |  | 5d | 2024-08-30 | 2024-09-05 |  | 5d |  |
| 30 | 3.3.2 | Installation Layout |  | 5d | 2024-08-30 | 2024-09-05 |  | 5d |  |
| 31 | 3.3.3 | Cable Tray Layout |  | 5d | 2024-08-30 | 2024-09-05 |  | 5d |  |
| 32 | 3.3.4 | Electrical Schematics |  | 10d | 2024-08-30 | 2024-09-12 |  | 0d |  |
| 33 | 3.3.5 | Termination Drawings |  | 5d | 2024-08-30 | 2024-09-05 |  | 5d |  |
| 34 | 3.3.6 | General Arrangement Drawings (GAs) |  | 5d | 2024-08-30 | 2024-09-05 |  | 2d | 0d |
| 35 | 3.3.7 | Cable Schedule |  | 3d | 2024-09-06 | 2024-09-10 | 34 | 2d |  |
| 36 | 3.3.8 | Cable Interconnection List |  | 2d | 2024-09-06 | 2024-09-09 | 34 | 3d |  |
| 37 | 3.3.9 | Earthing Connection |  | 2d | 2024-09-06 | 2024-09-09 | 34 | 3d |  |
| 38 | 3.3.10 | Bill Of Materials (BOM) |  | 2d | 2024-08-30 | 2024-09-02 |  | 8d |  |
| 39 | 3.3.11 | Review, Ammend and Approval |  | 5d | 2024-08-30 | 2024-09-05 |  | 5d |  |
| 40 | 4 | **Software Development** |  | 10d | 2024-08-30 | 2024-09-12 | 10, 15 | 0d |  |
| 41 | 4.1 | Software Reverse Engineering |  | 10d | 2024-08-30 | 2024-09-12 |  | 124d |  |
| 42 | 4.2 | **Controller Development** |  | 5d | 2024-08-30 | 2024-09-05 |  | 0d |  |
| 43 | 4.2.1 | Device Block Development | manual | 5d | 2024-08-30 | 2024-09-05 |  |  |  |
| 44 | 4.2.2 | Control Block Development |  | 5d | 2024-08-30 | 2024-09-05 |  | 124d |  |
| 45 | 4.3 | **HMI Development** |  | 5d | 2024-08-30 | 2024-09-05 |  | 124d | 0d |
| 46 | 4.3.1 | Interfacing |  | 5d | 2024-08-30 | 2024-09-05 |  | 124d |  |
| 47 | 4.3.2 | UI Development |  | 5d | 2024-08-30 | 2024-09-05 |  | 124d |  |
| 48 | 4.4 | Software Testing |  | 5d | 2024-09-06 | 2024-09-12 | 42, 45 | 124d |  |
| 49 | 5 | **Procurement** |  | 60d | 2024-09-13 | 2024-12-05 | 9 | 0d |  |
| 50 | 5.1 | Ordering Process |  | 5d | 2024-09-13 | 2024-09-19 |  | 25d |  |
| 51 | 5.2 | Lead Time |  | 60d | 2024-09-13 | 2024-12-05 |  | 0d |  |

| ID | WBS | Task | Duration | Start | Finish | Predecessors | Total slack |
| --- | --- | --- | --- | --- | --- | --- | --- |
| 52 | 6 | **Panel Fabrication** | 38d | 2024-10-25 | 2024-12-17 |  | 0d |
| 53 | 6.1 | Construction | 30d | 2024-10-25 | 2024-12-05 | 50, 49FF | 0d |
| 54 | 6.2 | Internal FAT | 5d | 2024-12-06 | 2024-12-12 | 53 | 0d |
| 55 | 6.3 | Client FAT | 3d | 2024-12-13 | 2024-12-17 | 54 | 0d |
| 56 | 7 | **Shipment and Delivery** | 14d | 2024-12-18 | 2025-01-06 | 52 | 0d |
| 57 | 7.1 | Packing | 1d | 2024-12-18 | 2024-12-18 |  | 13d |
| 58 | 7.2 | Pickup | 1d | 2024-12-18 | 2024-12-18 |  | 13d |
| 59 | 7.3 | Transit | 14d | 2024-12-18 | 2025-01-06 |  | 0d |
| 60 | 7.4 | Receive | 1d | 2024-12-18 | 2024-12-18 |  | 13d |
| 61 | 8 | **Installation** | 14d | 2025-01-07 | 2025-01-24 | 56 | 0d |
| 62 | 8.1 | Panel Mounting | 5d | 2025-01-07 | 2025-01-13 |  | 9d |
| 63 | 8.2 | Cable Pulling | 14d | 2025-01-07 | 2025-01-24 |  | 0d |
| 64 | 8.3 | Panel Terminations | 10d | 2025-01-07 | 2025-01-20 |  | 4d |
| 65 | 9 | **Commissioning** | 27d | 2025-01-27 | 2025-03-04 | 61 | 0d |
| 66 | 9.1 | Power up | 1d | 2025-01-27 | 2025-01-27 |  | 26d |
| 67 | 9.2 | Pre Commissioning | 14d | 2025-01-27 | 2025-02-13 |  | 0d |
| 68 | 9.3 | Function Testing | 3d | 2025-02-14 | 2025-02-18 | 67 | 0d |
| 69 | 9.4 | Production Run | 2d | 2025-01-27 | 2025-01-28 |  | 25d |
| 70 | 9.5 | Site Acceptance Testing | 10d | 2025-02-19 | 2025-03-04 | 68 | 0d |
| 71 | 10 | Delivery And Sign-off | 1d? | 2025-03-05 | 2025-03-05 | 65 | 0d |
